# Carta Gantt 2

Schedule from MS Project, 2024-08-14 to 2024-12-03, A marks actual dates.

## Calendars

- Estándar: Mon-Fri 09:00-13:00, 15:00-19:00; Sat-Sun off. Exceptions (off unless hours are given): 2024-08-15 (Feriado), 2024-09-18 to 2024-09-20 (Fiestas Patrias), 2024-10-31 to 2024-11-01 (Halloween).

## Resources

| Resource |
| --- |
| Jefe de Proyecto |
| Desarrollador |
| QA |
| Diseñador BD |

## Schedule

| ID | WBS | Task | Duration | Start | Finish | Predecessors | Complete | Resources | Work | Actual work |
| --- | --- | --- | --- | --- | --- | --- | --- | --- | --- | --- |
| 1 | 1 | **School All in One** | 73.6d | 2024-08-14 09:00 A | 2024-12-03 15:48 A |  | 100% |  | 1096h | 1096h |
| 2 | 1.1 | **Fase de Planificacion** | 15d | 2024-08-14 09:00 A | 2024-09-04 19:00 A |  | 100% |  | 226.4h | 226.4h |
| 3 | 1.1.1 | Kick Off | 0.3d | 2024-08-14 09:00 A | 2024-08-14 11:24 A |  | 100% | Jefe de Proyecto | 2.4h | 2.4h |
| 4 | 1.1.2 | Reunion Organizacional de Equipo | 0.3d | 2024-08-14 11:24 A | 2024-08-14 15:48 A | 3 | 100% | Jefe de Proyecto; Desarrollador; Diseñador BD; QA | 9.6h | 9.6h |
| 5 | 1.1.3 | Carta Gantt | 1d | 2024-08-14 15:48 A | 2024-08-16 15:48 A | 4 | 100% | Jefe de Proyecto | 8h | 8h |
| 6 | 1.1.4 | Toma de Requerimientos | 0.3d | 2024-08-16 15:48 A | 2024-08-16 18:12 A | 5 | 100% | Desarrollador; Diseñador BD; Jefe de Proyecto; QA | 9.6h | 9.6h |
| 7 | 1.1.5 | Analisis de los Requerimientos | 0.3d | 2024-08-16 18:12 A | 2024-08-19 10:36 A | 6 | 100% | Jefe de Proyecto | 2.4h | 2.4h |
| 8 | 1.1.6 | Diagrama UML | 1d | 2024-08-19 10:36 A | 2024-08-20 10:36 A | 7 | 100% | Jefe de Proyecto | 8h | 8h |
| 9 | 1.1.7 | Casos de Uso Extendido | 1d | 2024-08-20 10:36 A | 2024-08-21 10:36 A | 8 | 100% | Jefe de Proyecto | 8h | 8h |
| 10 | 1.1.8 | Analisis del Caso | 0.5d | 2024-08-21 10:36 A | 2024-08-21 16:36 A | 9 | 100% | Desarrollador; Jefe de Proyecto | 8h | 8h |
| 11 | 1.1.9 | Matriz de Responsabilidad RACI | 0.3d | 2024-08-21 16:36 A | 2024-08-21 19:00 A | 10 | 100% | Jefe de Proyecto | 2.4h | 2.4h |
| 12 | 1.1.10 | Diagrama EDT | 1d | 2024-08-22 09:00 A | 2024-08-22 19:00 A | 11 | 100% | Jefe de Proyecto | 8h | 8h |
| 13 | 1.1.11 | Matriz EDT | 1d | 2024-08-23 09:00 A | 2024-08-23 19:00 A | 12 | 100% | Jefe de Proyecto | 8h | 8h |
| 14 | 1.1.12 | Acta de Constitucion | 0.5d | 2024-08-26 09:00 A | 2024-08-26 13:00 A | 13 | 100% | Jefe de Proyecto | 4h | 4h |
| 15 | 1.1.13 | Registro de Riesgos | 0.5d | 2024-08-26 15:00 A | 2024-08-26 19:00 A | 14 | 100% | Jefe de Proyecto | 4h | 4h |
| 16 | 1.1.14 | Modelos de Base de Datos | 1d | 2024-08-27 09:00 A | 2024-08-27 19:00 A | 15 | 100% | Diseñador BD; Jefe de Proyecto | 16h | 16h |
| 17 | 1.1.15 | Mockup | 5d | 2024-08-28 09:00 A | 2024-09-03 19:00 A | 16 | 100% | Desarrollador; Diseñador BD; Jefe de Proyecto | 120h | 120h |
| 18 | 1.1.16 | Informe ERS | 0.5d | 2024-09-04 11:24 A | 2024-09-04 17:24 A | 17 | 100% | Jefe de Proyecto | 4h | 4h |
| 19 | 1.1.17 | Documento de Definicion Proyecto APT Fase 1 | 0.1d | 2024-09-04 17:24 A | 2024-09-04 18:12 A | 18 | 100% | Jefe de Proyecto | 0.8h | 0.8h |
| 20 | 1.1.18 | Revision de la Documentacion | 0.1d | 2024-09-04 18:12 A | 2024-09-04 19:00 A | 19 | 100% | QA; Desarrollador; Diseñador BD; Jefe de Proyecto | 3.2h | 3.2h |
| 21 | 1.2 | **Fase de Analisis y Diseño** | 8.5d | 2024-09-05 09:00 A | 2024-09-17 13:00 A | 20 | 100% |  | 122.4h | 122.4h |
| 22 | 1.2.1 | Reunion Organizacional de Equipo | 0.3d | 2024-09-05 09:00 A | 2024-09-05 11:24 A |  | 100% | Desarrollador; Diseñador BD; Jefe de Proyecto; QA | 9.6h | 9.6h |
| 23 | 1.2.2 | Atributos de Calidad | 0.3d | 2024-09-05 11:24 A | 2024-09-05 15:48 A | 22 | 100% | Jefe de Proyecto | 2.4h | 2.4h |
| 24 | 1.2.3 | Escenarios de Calidad | 0.3d | 2024-09-05 15:48 A | 2024-09-05 18:12 A | 23 | 100% | Jefe de Proyecto | 2.4h | 2.4h |
| 25 | 1.2.4 | Documento de Arquitectura (DAS) | 1d | 2024-09-05 18:12 A | 2024-09-06 18:12 A | 24 | 100% | Jefe de Proyecto | 8h | 8h |
| 26 | 1.2.5 | Diagrama de Componentes | 1d | 2024-09-06 18:12 A | 2024-09-09 18:12 A | 25 | 100% | Jefe de Proyecto; Desarrollador | 16h | 16h |
| 27 | 1.2.6 | Diagrama de Despliegue | 1d | 2024-09-09 18:12 A | 2024-09-10 18:12 A | 26 | 100% | Diseñador BD; Jefe de Proyecto | 16h | 16h |
| 28 | 1.2.7 | Diagrama de Actividades | 1d | 2024-09-10 18:12 A | 2024-09-11 18:12 A | 27 | 100% | Desarrollador; Jefe de Proyecto | 16h | 16h |
| 29 | 1.2.8 | Diagrama de Secuencia | 1d | 2024-09-11 18:12 A | 2024-09-12 18:12 A | 28 | 100% | Desarrollador; Jefe de Proyecto | 16h | 16h |
| 30 | 1.2.9 | Diagrama de Clases | 1d | 2024-09-12 18:12 A | 2024-09-13 18:12 A | 29 | 100% | Jefe de Proyecto | 8h | 8h |
| 31 | 1.2.10 | Diccionario de Base de Datos | 0.5d | 2024-09-13 18:12 A | 2024-09-16 12:12 A | 30 | 100% | Diseñador BD; Jefe de Proyecto | 8h | 8h |
| 32 | 1.2.11 | Script de Base de Datos | 0.5d | 2024-09-16 12:12 A | 2024-09-16 18:12 A | 31 | 100% | Diseñador BD; Jefe de Proyecto | 8h | 8h |
| 33 | 1.2.12 | Documento Desarrollo Final Proyecto APT Fase 2 | 0.3d | 2024-09-16 18:12 A | 2024-09-17 10:36 A | 32 | 100% | Jefe de Proyecto | 2.4h | 2.4h |
| 34 | 1.2.13 | Revision de la Documentacion | 0.3d | 2024-09-17 10:36 A | 2024-09-17 13:00 A | 33 | 100% | Diseñador BD; Jefe de Proyecto; Desarrollador; QA | 9.6h | 9.6h |

| ID | WBS | Task | Duration | Start | Finish | Predecessors | Complete | Constraint | Resources | Work | Actual work |
| --- | --- | --- | --- | --- | --- | --- | --- | --- | --- | --- | --- |
| 35 | 1.3 | **Fase de Desarrollo** | 39.1d | 2024-09-17 15:00 A | 2024-11-18 15:48 A | 34 | 100% |  |  | 595.2h | 595.2h |
| 36 | 1.3.1 | Implementacion Ambiente de Desarrollo | 0.5d | 2024-09-17 15:00 A | 2024-09-17 19:00 A |  | 100% | start no earlier than 2024-09-17 09:00 | Jefe de Proyecto | 4h | 4h |
| 37 | 1.3.2 | **1. Menu Principal** | 1.7d | 2024-09-23 09:00 A | 2024-09-24 16:36 A | 36 | 100% |  |  | 14.4h | 14.4h |
| 38 | 1.3.2.1 | 1.1 Inicio | 0.1d | 2024-09-23 09:00 A | 2024-09-23 09:48 A |  | 100% |  | Desarrollador | 0.8h | 0.8h |
| 39 | 1.3.2.2 | 1.2 Admision | 0.1d | 2024-09-23 09:48 A | 2024-09-23 10:36 A | 38 | 100% |  | Desarrollador | 0.8h | 0.8h |
| 40 | 1.3.2.3 | 1.3 Iniciar Sesion | 0.1d | 2024-09-23 10:36 A | 2024-09-23 11:24 A | 39 | 100% |  | Desarrollador; Diseñador BD | 1.6h | 1.6h |
| 41 | 1.3.2.4 | 1.4 Galeria | 0.5d | 2024-09-23 11:24 A | 2024-09-23 17:24 A | 40 | 100% |  | Desarrollador | 4h | 4h |
| 42 | 1.3.2.5 | 1.5 Nosotros | 0.2d | 2024-09-23 17:24 A | 2024-09-23 19:00 A | 41 | 100% |  | Desarrollador | 1.6h | 1.6h |
| 43 | 1.3.2.6 | 1.6 Contacto | 0.1d | 2024-09-24 09:00 A | 2024-09-24 09:48 A | 42 | 100% |  | Desarrollador | 0.8h | 0.8h |
| 44 | 1.3.2.7 | 1.7 Carrusel de Imágenes | 0.3d | 2024-09-24 09:48 A | 2024-09-24 12:12 A | 43 | 100% |  | Desarrollador | 2.4h | 2.4h |
| 45 | 1.3.2.8 | 1.8 Banner con Informacion de la Empresa | 0.3d | 2024-09-24 12:12 A | 2024-09-24 16:36 A | 44 | 100% |  | Desarrollador | 2.4h | 2.4h |
| 46 | 1.3.3 | **2. Menu Docente** | 5.1d | 2024-09-24 16:36 A | 2024-10-01 17:24 A | 45 | 100% |  |  | 69.6h | 69.6h |
| 47 | 1.3.3.1 | 2.1 Inicio | 0.1d | 2024-09-24 16:36 A | 2024-09-24 17:24 A |  | 100% |  | Desarrollador | 0.8h | 0.8h |
| 48 | 1.3.3.2 | 2.2 Actualizar | 0.1d | 2024-09-24 17:24 A | 2024-09-24 18:12 A | 47 | 100% |  | Desarrollador; Diseñador BD | 1.6h | 1.6h |
| 49 | 1.3.3.3 | 2.3 Cerrar Sesion | 0.1d | 2024-09-24 18:12 A | 2024-09-24 19:00 A | 48 | 100% |  | Desarrollador; Diseñador BD | 1.6h | 1.6h |
| 50 | 1.3.3.4 | 2.4 Listado de Cursos | 0.3d | 2024-09-25 09:00 A | 2024-09-25 11:24 A | 49 | 100% |  | Desarrollador; Diseñador BD | 4.8h | 4.8h |
| 51 | 1.3.3.5 | 2.5 Ver Curso | 0.5d | 2024-09-25 11:24 A | 2024-09-25 17:24 A | 50 | 100% |  | Desarrollador | 4h | 4h |
| 52 | 1.3.3.6 | 2.5 Banner con Informacion de la Empresa | 0.3d | 2024-09-25 17:24 A | 2024-09-26 09:48 A | 51 | 100% |  | Desarrollador | 2.4h | 2.4h |
| 53 | 1.3.3.7 | **2.7 Administrar Clase** | 3.7d | 2024-09-26 09:48 A | 2024-10-01 17:24 A | 52 | 100% |  |  | 54.4h | 54.4h |
| 54 | 1.3.3.7.1 | 2.7.1 Listado de Alumnos | 0.3d | 2024-09-26 09:48 A | 2024-09-26 12:12 A |  | 100% |  | Desarrollador; Diseñador BD | 4.8h | 4.8h |
| 55 | 1.3.3.7.2 | 2.7.2 Actualizar | 0.1d | 2024-09-26 12:12 A | 2024-09-26 13:00 A | 54 | 100% |  | Desarrollador | 0.8h | 0.8h |
| 56 | 1.3.3.7.3 | 2.7.3 Volver | 0.1d | 2024-09-26 15:00 A | 2024-09-26 15:48 A | 55 | 100% |  | Desarrollador | 0.8h | 0.8h |
| 57 | 1.3.3.7.4 | 2.7.4 Crear | 0.3d | 2024-09-26 15:48 A | 2024-09-26 18:12 A | 56 | 100% |  | Desarrollador; Diseñador BD | 4.8h | 4.8h |
| 58 | 1.3.3.7.5 | 2.7.5 Modificar | 0.3d | 2024-09-26 18:12 A | 2024-09-27 10:36 A | 57 | 100% |  | Desarrollador; Diseñador BD | 4.8h | 4.8h |

| ID | WBS | Task | Duration | Start | Finish | Predecessors | Complete | Resources | Work | Actual work |
| --- | --- | --- | --- | --- | --- | --- | --- | --- | --- | --- |
| 59 | 1.3.3.7.6 | **2.7.6 Administrar Notas** | 1.1d | 2024-09-27 10:36 A | 2024-09-30 11:24 A | 58 | 100% |  | 16h | 16h |
| 60 | 1.3.3.7.6.1 | 2.7.6.1 Visualizar Datos Alumno | 0.3d | 2024-09-27 10:36 A | 2024-09-27 13:00 A |  | 100% | Desarrollador; Diseñador BD | 4.8h | 4.8h |
| 61 | 1.3.3.7.6.2 | 2.7.6.2 Actualizar | 0.1d | 2024-09-27 15:00 A | 2024-09-27 15:48 A | 60 | 100% | Desarrollador | 0.8h | 0.8h |
| 62 | 1.3.3.7.6.3 | 2.7.6.3 Volver | 0.1d | 2024-09-27 15:48 A | 2024-09-27 16:36 A | 61 | 100% | Desarrollador | 0.8h | 0.8h |
| 63 | 1.3.3.7.6.4 | 2.7.6.4 Modificar | 0.3d | 2024-09-27 16:36 A | 2024-09-27 19:00 A | 62 | 100% | Desarrollador; Diseñador BD | 4.8h | 4.8h |
| 64 | 1.3.3.7.6.5 | 2.7.6.5 Agregar | 0.3d | 2024-09-30 09:00 A | 2024-09-30 11:24 A | 63 | 100% | Desarrollador; Diseñador BD | 4.8h | 4.8h |
| 65 | 1.3.3.7.7 | **2.7.7 Administrar Anotaciones** | 1.5d | 2024-09-30 11:24 A | 2024-10-01 17:24 A | 64 | 100% |  | 22.4h | 22.4h |
| 66 | 1.3.3.7.7.1 | 2.7.7.1 Visualizar Datos Alumno | 0.3d | 2024-09-30 11:24 A | 2024-09-30 15:48 A |  | 100% | Desarrollador; Diseñador BD | 4.8h | 4.8h |
| 67 | 1.3.3.7.7.2 | 2.7.7.2 Listado de Anotaciones | 0.1d | 2024-09-30 15:48 A | 2024-09-30 16:36 A | 66 | 100% | Desarrollador; Diseñador BD | 1.6h | 1.6h |
| 68 | 1.3.3.7.7.3 | 2.7.7.3 Actualizar | 0.1d | 2024-09-30 16:36 A | 2024-09-30 17:24 A | 67 | 100% | Desarrollador | 0.8h | 0.8h |
| 69 | 1.3.3.7.7.4 | 2.7.7.4 Volver | 0.1d | 2024-09-30 17:24 A | 2024-09-30 18:12 A | 68 | 100% | Desarrollador | 0.8h | 0.8h |
| 70 | 1.3.3.7.7.5 | 2.7.7.5 Crear | 0.3d | 2024-09-30 18:12 A | 2024-10-01 10:36 A | 69 | 100% | Desarrollador; Diseñador BD | 4.8h | 4.8h |
| 71 | 1.3.3.7.7.6 | 2.7.7.6 Modficar | 0.3d | 2024-10-01 10:36 A | 2024-10-01 13:00 A | 70 | 100% | Desarrollador; Diseñador BD | 4.8h | 4.8h |
| 72 | 1.3.3.7.7.7 | 2.7.7.2 Eliminar | 0.3d | 2024-10-01 15:00 A | 2024-10-01 17:24 A | 71 | 100% | Desarrollador; Diseñador BD | 4.8h | 4.8h |
| 73 | 1.3.4 | **3 Menu Administrador** | 21.3d | 2024-10-01 17:24 A | 2024-11-04 09:48 A | 72 | 100% |  | 291.2h | 291.2h |
| 74 | 1.3.4.1 | 3.1 Inicio | 0.1d | 2024-10-01 17:24 A | 2024-10-01 18:12 A |  | 100% | Desarrollador | 0.8h | 0.8h |
| 75 | 1.3.4.2 | 3.2 Asignaturas | 0.1d | 2024-10-01 18:12 A | 2024-10-01 19:00 A | 74 | 100% | Desarrollador | 0.8h | 0.8h |
| 76 | 1.3.4.3 | 3.4 Cerrar Sesion | 0.1d | 2024-10-02 09:00 A | 2024-10-02 09:48 A | 75 | 100% | Desarrollador; Diseñador BD | 1.6h | 1.6h |
| 77 | 1.3.4.4 | 3.6 Banner con Informacion de la Empresa | 1d | 2024-10-02 09:48 A | 2024-10-03 09:48 A | 76 | 100% | Desarrollador | 8h | 8h |
| 78 | 1.3.4.5 | **3.7 Administrar Clase** | 20d | 2024-10-03 09:48 A | 2024-11-04 09:48 A | 77 | 100% |  | 280h | 280h |
| 79 | 1.3.4.5.1 | 3.7.1 Listado de Alumnos | 0.5d | 2024-10-03 09:48 A | 2024-10-03 15:48 A |  | 100% | Desarrollador; Diseñador BD | 8h | 8h |
| 80 | 1.3.4.5.2 | 3.7.2 Actualizar | 0.5d | 2024-10-03 15:48 A | 2024-10-04 09:48 A | 79 | 100% | Desarrollador | 4h | 4h |
| 81 | 1.3.4.5.3 | 3.7.3 Volver | 0.5d | 2024-10-04 09:48 A | 2024-10-04 15:48 A | 80 | 100% | Desarrollador | 4h | 4h |
| 82 | 1.3.4.5.4 | 3.7.4 Crear | 1d | 2024-10-04 15:48 A | 2024-10-07 15:48 A | 81 | 100% | Desarrollador; Diseñador BD | 16h | 16h |
| 83 | 1.3.4.5.5 | 3.7.5 Modificar | 1d | 2024-10-07 15:48 A | 2024-10-08 15:48 A | 82 | 100% | Desarrollador; Diseñador BD | 16h | 16h |

| ID | WBS | Task | Duration | Start | Finish | Predecessors | Complete | Resources | Work | Actual work |
| --- | --- | --- | --- | --- | --- | --- | --- | --- | --- | --- |
| 84 | 1.3.4.5.6 | **3.7.6 Administrar Notas** | 3.5d | 2024-10-08 15:48 A | 2024-10-14 09:48 A | 83 | 100% |  | 48h | 48h |
| 85 | 1.3.4.5.6.1 | 3.7.6.1 Visualizar Datos Alumno | 0.5d | 2024-10-08 15:48 A | 2024-10-09 09:48 A |  | 100% | Desarrollador; Diseñador BD | 8h | 8h |
| 86 | 1.3.4.5.6.2 | 3.7.6.2 Actualizar | 0.5d | 2024-10-09 09:48 A | 2024-10-09 15:48 A | 85 | 100% | Desarrollador | 4h | 4h |
| 87 | 1.3.4.5.6.3 | 3.7.6.3 Volver | 0.5d | 2024-10-09 15:48 A | 2024-10-10 09:48 A | 86 | 100% | Desarrollador | 4h | 4h |
| 88 | 1.3.4.5.6.4 | 3.7.6.4 Modificar | 1d | 2024-10-10 09:48 A | 2024-10-11 09:48 A | 87 | 100% | Desarrollador; Diseñador BD | 16h | 16h |
| 89 | 1.3.4.5.6.5 | 3.7.6.5 Agregar | 1d | 2024-10-11 09:48 A | 2024-10-14 09:48 A | 88 | 100% | Desarrollador; Diseñador BD | 16h | 16h |
| 90 | 1.3.4.5.7 | **3.7.7 Administrar Anotaciones** | 5d | 2024-10-14 09:48 A | 2024-10-21 09:48 A | 89 | 100% |  | 72h | 72h |
| 91 | 1.3.4.5.7.1 | 3.7.7.1 Visualizar Datos Alumno | 0.5d | 2024-10-14 09:48 A | 2024-10-14 15:48 A |  | 100% | Desarrollador; Diseñador BD | 8h | 8h |
| 92 | 1.3.4.5.7.2 | 3.7.7.2 Listado de Anotaciones | 0.5d | 2024-10-14 15:48 A | 2024-10-15 09:48 A | 91 | 100% | Desarrollador; Diseñador BD | 8h | 8h |
| 93 | 1.3.4.5.7.3 | 3.7.7.3 Actualizar | 0.5d | 2024-10-15 09:48 A | 2024-10-15 15:48 A | 92 | 100% | Desarrollador | 4h | 4h |
| 94 | 1.3.4.5.7.4 | 3.7.7.4 Volver | 0.5d | 2024-10-15 15:48 A | 2024-10-16 09:48 A | 93 | 100% | Desarrollador | 4h | 4h |
| 95 | 1.3.4.5.7.5 | 3.7.7.5 Crear | 1d | 2024-10-16 09:48 A | 2024-10-17 09:48 A | 94 | 100% | Desarrollador; Diseñador BD | 16h | 16h |
| 96 | 1.3.4.5.7.6 | 3.7.7.6 Modficar | 1d | 2024-10-17 09:48 A | 2024-10-18 09:48 A | 95 | 100% | Desarrollador; Diseñador BD | 16h | 16h |
| 97 | 1.3.4.5.7.7 | 3.7.7.7 Eliminar | 1d | 2024-10-18 09:48 A | 2024-10-21 09:48 A | 96 | 100% | Desarrollador; Diseñador BD | 16h | 16h |
| 98 | 1.3.4.5.8 | **3.7.8 Administrar Curso** | 3d | 2024-10-21 09:48 A | 2024-10-24 09:48 A | 97 | 100% |  | 40h | 40h |
| 99 | 1.3.4.5.8.1 | 3.7.8.1 Volver | 0.5d | 2024-10-21 09:48 A | 2024-10-21 15:48 A |  | 100% | Desarrollador | 4h | 4h |
| 100 | 1.3.4.5.8.2 | 3.7.8.2 Limpiar | 0.5d | 2024-10-21 15:48 A | 2024-10-22 09:48 A | 99 | 100% | Desarrollador | 4h | 4h |
| 101 | 1.3.4.5.8.3 | 3.7.8.3 Agregar | 1d | 2024-10-22 09:48 A | 2024-10-23 09:48 A | 100 | 100% | Desarrollador; Diseñador BD | 16h | 16h |
| 102 | 1.3.4.5.8.4 | 3.7.8.4 Listado de Cursos | 1d | 2024-10-23 09:48 A | 2024-10-24 09:48 A | 101 | 100% | Desarrollador; Diseñador BD | 16h | 16h |
| 103 | 1.3.4.5.9 | **3.7.9 Administrar Asignatura** | 5d | 2024-10-24 09:48 A | 2024-11-04 09:48 A | 102 | 100% |  | 72h | 72h |
| 104 | 1.3.4.5.9.1 | 3.7.9.1 Volver | 0.5d | 2024-10-24 09:48 A | 2024-10-24 15:48 A |  | 100% | Desarrollador | 4h | 4h |
| 105 | 1.3.4.5.9.2 | 3.7.9.2 Actualizar | 0.5d | 2024-10-24 15:48 A | 2024-10-25 09:48 A | 104 | 100% | Desarrollador | 4h | 4h |
| 106 | 1.3.4.5.9.3 | 3.7.9.3 Listado de Asignaturas | 1d | 2024-10-25 09:48 A | 2024-10-28 09:48 A | 105 | 100% | Desarrollador; Diseñador BD | 16h | 16h |
| 107 | 1.3.4.5.9.4 | 3.7.9.4 Agregar | 1d | 2024-10-28 09:48 A | 2024-10-29 09:48 A | 106 | 100% | Desarrollador; Diseñador BD | 16h | 16h |
| 108 | 1.3.4.5.9.5 | 3.7.9.5 Modificar | 1d | 2024-10-29 09:48 A | 2024-10-30 09:48 A | 107 | 100% | Desarrollador; Diseñador BD | 16h | 16h |
| 109 | 1.3.4.5.9.6 | 3.7.9.6 Eliminar | 1d | 2024-10-30 09:48 A | 2024-11-04 09:48 A | 108 | 100% | Desarrollador; Diseñador BD | 16h | 16h |

| ID | WBS | Task | Duration | Start | Finish | Predecessors | Complete | Resources | Work | Actual work |
| --- | --- | --- | --- | --- | --- | --- | --- | --- | --- | --- |
| 110 | 1.3.5 | **4 Menu Apoderado** | 3.5d | 2024-11-04 09:48 A | 2024-11-07 15:48 A | 109 | 100% |  | 40h | 40h |
| 111 | 1.3.5.1 | 3.1 Inicio | 0.5d | 2024-11-04 09:48 A | 2024-11-04 15:48 A |  | 100% | Desarrollador | 4h | 4h |
| 112 | 1.3.5.2 | 3.2 Volver | 0.5d | 2024-11-04 15:48 A | 2024-11-05 09:48 A | 111 | 100% | Desarrollador | 4h | 4h |
| 113 | 1.3.5.3 | 3.3 Cerrar Sesion | 0.5d | 2024-11-05 09:48 A | 2024-11-05 15:48 A | 112 | 100% | Desarrollador; Diseñador BD | 8h | 8h |
| 114 | 1.3.5.4 | 3.5 Visualizar Datos Alumno | 1d | 2024-11-05 15:48 A | 2024-11-06 15:48 A | 113 | 100% | Desarrollador; Diseñador BD | 16h | 16h |
| 115 | 1.3.5.5 | 3.6 Banner con Informacion de la Empresa | 1d | 2024-11-06 15:48 A | 2024-11-07 15:48 A | 114 | 100% | Desarrollador | 8h | 8h |
| 116 | 1.3.6 | Documento Informe Final Proyecto APT Fase 2 | 2d | 2024-11-07 15:48 A | 2024-11-11 15:48 A | 115 | 100% | Jefe de Proyecto | 16h | 16h |
| 117 | 1.3.7 | Reuniones de Revision | 5d | 2024-11-11 15:48 A | 2024-11-18 15:48 A | 116 | 100% | Desarrollador; Diseñador BD; Jefe de Proyecto; QA | 160h | 160h |
| 118 | 1.4 | **Fase de Pruebas y Control de Calidad** | 5d | 2024-11-18 15:48 A | 2024-11-25 15:48 A | 117 | 100% |  | 80h | 80h |
| 119 | 1.4.1 | Plan de Pruebas | 3d | 2024-11-18 15:48 A | 2024-11-21 15:48 A |  | 100% | QA; Jefe de Proyecto | 48h | 48h |
| 120 | 1.4.2 | Matriz de Control de Cambios | 1d | 2024-11-21 15:48 A | 2024-11-22 15:48 A | 119 | 100% | QA; Jefe de Proyecto | 16h | 16h |
| 121 | 1.4.3 | Verificacion Alcance | 1d | 2024-11-22 15:48 A | 2024-11-25 15:48 A | 120 | 100% | QA; Jefe de Proyecto | 16h | 16h |
| 122 | 1.5 | **Fase de Implementacion y Cierre** | 6d | 2024-11-25 15:48 A | 2024-12-03 15:48 A | 121 | 100% |  | 72h | 72h |
| 123 | 1.5.1 | Manual de Usuario | 3d | 2024-11-25 15:48 A | 2024-11-28 15:48 A |  | 100% | Desarrollador; Jefe de Proyecto | 48h | 48h |
| 124 | 1.5.2 | Informe de Cierre | 2d | 2024-11-28 15:48 A | 2024-12-02 15:48 A | 123 | 100% | Jefe de Proyecto | 16h | 16h |
| 125 | 1.5.3 | Documentos Presentacion Proyecto APT Fase 3 | 1d | 2024-12-02 15:48 A | 2024-12-03 15:48 A | 124 | 100% | Jefe de Proyecto | 8h | 8h |
